# V2_WBS_COCINA

Schedule from MS Project, 2020-05-12 to 2020-08-20, costs in S.

## Calendars

- Standard: Mon-Fri 09:00-13:00, 15:00-19:00; Sat-Sun off.

## Resources

| Resource | Rate |
| --- | --- |
| Orestes Ramirez | 6 |
| Leydi Huallpa | 6 |
| Angela Balaguer | 6 |

## Schedule

| ID | WBS | Task | Duration | Start | Finish | Predecessors | Total slack | Free slack | Constraint | Resources | Work | Cost |
| --- | --- | --- | --- | --- | --- | --- | --- | --- | --- | --- | --- | --- |
| 1 | 1 | **APP PARA EL SEGUIMIENTO DE MERCADOS MOVIL** | 73d? | 2020-05-12 | 2020-08-20 |  | 0d |  |  |  | 1272h | 7,632 |
| 2 | 1.1 | **FASE INICIO** | 25d | 2020-05-12 | 2020-06-15 |  | 0d |  |  |  | 320h | 1,920 |
| 3 | 1.1.1 | **Iniciacion** | 2d | 2020-05-12 | 2020-05-13 |  | 1d | 0d |  |  | 16h | 96 |
| 4 | 1.1.1.1 | Idea de Proyecto | 2d | 2020-05-12 | 2020-05-13 |  | 1d |  | start no earlier than 2020-05-12 | Orestes Ramirez | 16h | 96 |
| 5 | 1.1.2 | **Planificacion** | 3d | 2020-05-14 | 2020-05-18 | 3 | 0d |  |  |  | 24h | 144 |
| 6 | 1.1.2.1 | EDT WBS | 1d | 2020-05-14 | 2020-05-14 |  | 2d |  |  | Leydi Huallpa | 8h | 48 |
| 7 | 1.1.2.2 | **Normatividad** | 2d | 2020-05-15 | 2020-05-18 |  | 0d |  |  |  | 16h | 96 |
| 8 | 1.1.2.2.1 | Estandares de Programacion | 2d | 2020-05-15 | 2020-05-18 |  | 0d |  | start no earlier than 2020-05-15 | Angela Balaguer | 16h | 96 |
| 9 | 1.1.3 | **Ejecucion** | 18d | 2020-05-19 | 2020-06-11 | 5 | 0d |  |  |  | 224h | 1,344 |
| 10 | 1.1.3.1 | Requerimientos | 8d | 2020-05-19 | 2020-05-28 |  | 0d |  |  | Leydi Huallpa | 64h | 384 |
| 11 | 1.1.3.2 | Prototipos | 4d | 2020-05-29 | 2020-06-03 | 10 | 0d |  |  | Angela Balaguer | 32h | 192 |
| 12 | 1.1.3.3 | **Arquitectura** | 18d | 2020-05-19 | 2020-06-11 |  | 0d |  |  |  | 96h | 576 |
| 13 | 1.1.3.3.1 | Diagrama de Procesos | 2d | 2020-05-19 | 2020-05-20 |  | 16d |  |  | Orestes Ramirez | 16h | 96 |
| 14 | 1.1.3.3.2 | Vista de casos de uso | 2d | 2020-06-04 | 2020-06-05 | 11 | 0d |  |  | Angela Balaguer | 16h | 96 |
| 15 | 1.1.3.3.3 | Diagrama de actividades | 1d | 2020-06-08 | 2020-06-08 | 14 | 0d |  |  | Leydi Huallpa | 8h | 48 |
| 16 | 1.1.3.3.4 | Vista de despliegue | 1d | 2020-06-09 | 2020-06-09 | 15 | 0d |  |  | Orestes Ramirez | 8h | 48 |
| 17 | 1.1.3.3.5 | Diagrama de clases | 2d | 2020-06-10 | 2020-06-11 | 16 | 0d |  |  | Angela Balaguer; Leydi Huallpa; Orestes Ramirez | 48h | 288 |
| 18 | 1.1.3.4 | **Gestion** | 3d | 2020-06-09 | 2020-06-11 |  | 0d |  |  |  | 32h | 192 |
| 19 | 1.1.3.4.1 | Matriz de riesgos | 2d | 2020-06-09 | 2020-06-10 |  | 1d |  | start no earlier than 2020-06-09 | Angela Balaguer | 16h | 96 |
| 20 | 1.1.3.4.2 | Matriz de trazabilidad | 2d | 2020-06-10 | 2020-06-11 | 16 | 0d |  |  | Leydi Huallpa | 16h | 96 |
| 21 | 1.1.4 | **Calidad** | 2d | 2020-06-12 | 2020-06-15 | 9 | 0d |  |  |  | 48h | 288 |
| 22 | 1.1.4.1 | Checklist de Requerimientos | 2d | 2020-06-12 | 2020-06-15 |  | 0d |  |  | Leydi Huallpa | 16h | 96 |
| 23 | 1.1.4.2 | Checklist de Analisis | 2d | 2020-06-12 | 2020-06-15 |  | 0d |  |  | Angela Balaguer | 16h | 96 |
| 24 | 1.1.4.3 | Checklist de Diseño | 2d | 2020-06-12 | 2020-06-15 |  | 0d |  |  | Orestes Ramirez | 16h | 96 |

| ID | WBS | Task | Duration | Start | Finish | Predecessors | Total slack | Constraint | Resources | Work | Cost |
| --- | --- | --- | --- | --- | --- | --- | --- | --- | --- | --- | --- |
| 25 | 1.1.5 | **Conformidades** | 1d | 2020-05-18 | 2020-05-19 |  | 19.5d |  |  | 8h | 48 |
| 26 | 1.1.5.1 | Actas | 1d | 2020-05-18 | 2020-05-19 |  | 19.5d |  | Angela Balaguer | 8h | 48 |
| 27 | 1.2 | **FASE ELABORACION** | 20d? | 2020-06-16 | 2020-07-13 | 2 | 0d |  |  | 232h | 1,392 |
| 28 | 1.2.1 | **Plan de Iteracion 01** | 12d | 2020-06-16 | 2020-07-01 |  | 0d |  |  | 128h | 768 |
| 29 | 1.2.1.1 | Elaboracion de Plan de Iteracion 01 | 1d | 2020-06-16 | 2020-06-16 | 2 | 0d | start no earlier than 2020-06-16 | Angela Balaguer; Leydi Huallpa; Orestes Ramirez | 24h | 144 |
| 30 | 1.2.1.2 | **Analisis y Diseño** | 8d | 2020-06-17 | 2020-06-26 |  | 0d |  |  | 64h | 384 |
| 31 | 1.2.1.2.1 | Diagrama de Casos de Uso | 1d | 2020-06-17 | 2020-06-17 | 29 | 0d |  | Orestes Ramirez | 8h | 48 |
| 32 | 1.2.1.2.2 | Diagrama de Actividades | 2d | 2020-06-18 | 2020-06-19 | 31 | 0d |  | Leydi Huallpa | 16h | 96 |
| 33 | 1.2.1.2.3 | Elaboracion del MER | 1d | 2020-06-22 | 2020-06-22 | 32 | 0d |  | Angela Balaguer | 8h | 48 |
| 34 | 1.2.1.2.4 | Elaboracion de la Base de datos | 2d | 2020-06-23 | 2020-06-24 | 33 | 0d |  | Angela Balaguer | 16h | 96 |
| 35 | 1.2.1.2.5 | Prototipos del sistema | 2d | 2020-06-25 | 2020-06-26 | 34 | 0d |  | Orestes Ramirez | 16h | 96 |
| 36 | 1.2.1.3 | **Implementacion** | 2d | 2020-06-29 | 2020-06-30 |  | 0d |  |  | 16h | 96 |
| 37 | 1.2.1.3.1 | **Desarrollo de requerimientos Altos** | 2d | 2020-06-29 | 2020-06-30 |  | 0d |  |  | 16h | 96 |
| 38 | 1.2.1.3.1.1 | Modulo Gestionar Recetas | 2d | 2020-06-29 | 2020-06-30 | 35 | 0d |  | Angela Balaguer | 16h | 96 |
| 39 | 1.2.1.4 | **Pruebas** | 1d | 2020-07-01 | 2020-07-01 |  | 0d |  |  | 24h | 144 |
| 40 | 1.2.1.4.1 | Documento de Pruebas Unitarias | 1d | 2020-07-01 | 2020-07-01 | 38 | 0d |  | Leydi Huallpa; Angela Balaguer; Orestes Ramirez | 24h | 144 |
| 41 | 1.2.2 | **Plan de Iteracion 02** | 8d? | 2020-07-02 | 2020-07-13 | 28 | 0d |  |  | 104h | 624 |
| 42 | 1.2.2.1 | Elaboracion de Plan de Iteracion 02 | 1d | 2020-07-02 | 2020-07-02 | 40 | 0d |  | Angela Balaguer; Leydi Huallpa; Orestes Ramirez | 24h | 144 |
| 43 | 1.2.2.2 | **Diseño del sistema** | 5d | 2020-07-03 | 2020-07-09 |  | 0d |  |  | 40h | 240 |
| 44 | 1.2.2.2.1 | Revision de la arquitectura del sistema | 1d | 2020-07-03 | 2020-07-03 | 42 | 0d |  | Orestes Ramirez | 8h | 48 |
| 45 | 1.2.2.2.2 | Elaboracion del MER | 1d | 2020-07-06 | 2020-07-06 | 44 | 0d |  | Angela Balaguer | 8h | 48 |
| 46 | 1.2.2.2.3 | Elaboracion de la Base de datos | 1d | 2020-07-07 | 2020-07-07 | 45 | 0d |  | Leydi Huallpa | 8h | 48 |
| 47 | 1.2.2.2.4 | Prototipos del sistema | 2d | 2020-07-08 | 2020-07-09 | 46 | 0d |  | Orestes Ramirez | 16h | 96 |
| 48 | 1.2.2.3 | **Implementacion** | 8d? | 2020-07-02 | 2020-07-13 |  | 0d |  |  | 24h | 144 |
| 49 | 1.2.2.3.1 | **Desarrollo de requerimientos Altos** | 8d? | 2020-07-02 | 2020-07-13 |  | 0d |  |  | 24h | 144 |
| 50 | 1.2.2.3.1.1 | Modulo ABC | 1d | 2020-07-10 | 2020-07-10 | 47 | 0d |  | Angela Balaguer | 8h | 48 |
| 51 | 1.2.2.3.1.2 | Modulo ABC | 1d? | 2020-07-13 | 2020-07-13 | 50 | 0d |  | Leydi Huallpa | 8h | 48 |
| 52 | 1.2.2.3.1.3 | Modulo ABC | 1d? | 2020-07-02 | 2020-07-02 |  | 7d |  | Orestes Ramirez | 8h | 48 |

| ID | WBS | Task | Duration | Start | Finish | Predecessors | Total slack | Constraint | Resources | Work | Cost |
| --- | --- | --- | --- | --- | --- | --- | --- | --- | --- | --- | --- |
| 53 | 1.2.2.4 | **Pruebas** | 1d | 2020-07-02 | 2020-07-02 |  | 7d |  |  | 16h | 96 |
| 54 | 1.2.2.4.1 | Revision de Matriz de Trazabilidad | 1d | 2020-07-02 | 2020-07-02 |  | 7d |  | Angela Balaguer | 8h | 48 |
| 55 | 1.2.2.4.2 | Revision de Gestion de Riesgos | 1d | 2020-07-02 | 2020-07-02 |  | 7d |  | Leydi Huallpa | 8h | 48 |
| 56 | 1.3 | **FASE CONSTRUCCION** | 25d | 2020-07-14 | 2020-08-17 | 27 | 0d |  |  | 600h | 3,600 |
| 57 | 1.3.1 | **Iteracion 01** | 13d | 2020-07-14 | 2020-07-30 |  | 0d |  |  | 312h | 1,872 |
| 58 | 1.3.1.1 | Elaboracion del plan de iteracion 01 | 13d | 2020-07-14 | 2020-07-30 |  | 0d | start no earlier than 2020-07-14 | Angela Balaguer; Leydi Huallpa; Orestes Ramirez | 312h | 1,872 |
| 59 | 1.3.2 | **Iteracion 02** | 12d | 2020-07-31 | 2020-08-17 | 58 | 0d |  |  | 288h | 1,728 |
| 60 | 1.3.2.1 | Elaboracion del plan de iteracion 02 | 12d | 2020-07-31 | 2020-08-17 |  | 0d |  | Angela Balaguer; Leydi Huallpa; Orestes Ramirez | 288h | 1,728 |
| 61 | 1.4 | **FASE CIERRE** | 3d | 2020-08-18 | 2020-08-20 | 56 | 0d |  |  | 120h | 720 |
| 62 | 1.4.1 | ejecucion de pruebas | 2d | 2020-08-18 | 2020-08-19 |  | 1d |  | Leydi Huallpa; Angela Balaguer; Orestes Ramirez | 48h | 288 |
| 63 | 1.4.2 | manual de usuario | 3d | 2020-08-18 | 2020-08-20 |  | 0d |  | Angela Balaguer; Leydi Huallpa; Orestes Ramirez | 72h | 432 |
